# 19 03 2026 - Transidic Ai Master Programee of Works

Schedule from MS Project, 2026-03-30 to 2026-12-01, costs in $.

## Calendars

- Standard: Mon-Fri 08:00-12:00, 13:00-17:00; Sat-Sun off.

## Resources

| Resource |
| --- |
| Transidic Startup Studio |
| SS |
| SS;Transidic Startup Studio |

## Schedule

| ID | WBS | Task | Duration | Start | Finish | Predecessors | Baseline start | Baseline finish | Baseline duration | Total slack | Constraint | Resources | Work | Cost |
| --- | --- | --- | --- | --- | --- | --- | --- | --- | --- | --- | --- | --- | --- | --- |
| 1 | 1 | **DIASPORA RUNNER - MASTER PROGRAMME OF WORKS** | 176.38d | 2026-03-30 | 2026-12-01 |  | 2026-03-25 | 2026-10-20 | 150d | 0d |  |  | 1371h | 1,152 |
| 2 | 1.1 | **VALIDATE** | 176.38d | 2026-03-30 | 2026-12-01 |  | 2026-03-25 | 2026-10-20 | 150d | 0d |  |  | 1371h | 1,152 |
| 3 | 1.1.1 | **The Foundation** | 24.12d | 2026-03-30 | 2026-05-01 |  | 2026-03-25 | 2026-04-10 | 13d | 0d |  |  | 193h | 192 |
| 4 | 1.1.1.1 | Why - What you stand for and what you believe in as a business | 5d | 2026-03-30 | 2026-04-03 |  | 2026-03-25 | 2026-03-26 | 2d | 0d | start no earlier than 2026-03-30 | SS;Transidic Startup Studio | 40h |  |
| 5 | 1.1.1.2 | Vision - Where you're going, the aspirational end destination | 5d | 2026-04-06 | 2026-04-10 | 4 | 2026-03-27 | 2026-03-30 | 2d | 0d |  | SS;Transidic Startup Studio | 40h |  |
| 6 | 1.1.1.3 | Mission - Describes how you will achieve your vision | 5d | 2026-04-13 | 2026-04-17 | 5 | 2026-03-31 | 2026-04-01 | 2d | 0d |  | SS;Transidic Startup Studio | 40h |  |
| 7 | 1.1.1.4 | Values - Your Core brand values. The things you stand for and live by | 5d | 2026-04-20 | 2026-04-24 | 6 | 2026-04-02 | 2026-04-03 | 2d | 0d |  | SS;Transidic Startup Studio | 40h |  |
| 8 | 1.1.1.5 | Foundation Report | 1d | 2026-04-27 | 2026-04-27 | 7 | 2026-04-06 | 2026-04-06 | 1d | 0d |  | Transidic Startup Studio | 8h | 48 |
| 9 | 1.1.1.6 | Prepeparation of Powerpoint Presentation | 2d | 2026-04-28 | 2026-04-29 | 8 | 2026-04-07 | 2026-04-08 | 2d | 0d |  | Transidic Startup Studio | 16h | 96 |
| 10 | 1.1.1.7 | Meeting No. 1 | 1h | 2026-04-30 | 2026-04-30 | 9 | 2026-04-09 | 2026-04-09 | 1d | 0d |  | SS;Transidic Startup Studio | 1h |  |
| 11 | 1.1.1.8 | Preparation of Meeting No. 1 Minutes | 1d | 2026-04-30 | 2026-05-01 | 10 | 2026-04-10 | 2026-04-10 | 1d | 0d |  | Transidic Startup Studio | 8h | 48 |
| 12 | 1.1.2 | **Business set up, define products and services** | 51.12d | 2026-05-01 | 2026-07-13 |  | 2026-04-13 | 2026-05-29 | 35d | 0d |  |  | 409h | 768 |
| 13 | 1.1.2.1 | Is there a market for your product or service | 5d | 2026-05-01 | 2026-05-08 | 11 | 2026-04-13 | 2026-04-17 | 5d | 0d |  | SS;Transidic Startup Studio | 40h |  |
| 14 | 1.1.2.2 | What would people pay for this | 5d | 2026-05-08 | 2026-05-15 | 13 | 2026-04-20 | 2026-04-24 | 5d | 0d |  | SS;Transidic Startup Studio | 40h |  |
| 15 | 1.1.2.3 | Define your customer, their problem/desire, and your solution | 5d | 2026-05-15 | 2026-05-22 | 14 | 2026-04-27 | 2026-05-01 | 5d | 0d |  | SS;Transidic Startup Studio | 40h |  |
| 16 | 1.1.2.4 | Interview your ideal customers and intimately understand their needs and desires and get feedback on your assumptions | 10d | 2026-05-22 | 2026-06-05 | 15 | 2026-05-04 | 2026-05-08 | 5d | 0d |  | SS;Transidic Startup Studio | 80h |  |
| 17 | 1.1.2.5 | Develop a prototype and test it on your target market | 5d | 2026-06-05 | 2026-06-12 | 16 | 2026-05-11 | 2026-05-15 | 5d | 0d |  | SS;Transidic Startup Studio | 40h |  |
| 18 | 1.1.2.6 | Who are your competitors and how are you different? Why would people choose you | 5d | 2026-06-12 | 2026-06-19 | 17 | 2026-05-18 | 2026-05-22 | 5d | 0d |  | SS;Transidic Startup Studio | 40h |  |
| 19 | 1.1.2.7 | Preparation of a business set up, product definition and services report | 10d | 2026-06-19 | 2026-07-03 | 18 | 2026-05-25 | 2026-05-26 | 2d | 0d |  | Transidic Startup Studio | 80h | 480 |
| 20 | 1.1.2.8 | Preparation of Power Point Presentation | 5d | 2026-07-03 | 2026-07-10 | 19 | 2026-05-27 | 2026-05-27 | 1d | 0d |  | Transidic Startup Studio | 40h | 240 |
| 21 | 1.1.2.9 | Meeting No. 2 | 1h | 2026-07-10 | 2026-07-10 | 20 | 2026-05-28 | 2026-05-28 | 1d | 0d |  | SS;Transidic Startup Studio | 1h |  |
| 22 | 1.1.2.10 | Preparation of Meeting No. 2 Minutes | 1d | 2026-07-10 | 2026-07-13 | 21 | 2026-05-29 | 2026-05-29 | 1d | 101.12d |  | Transidic Startup Studio | 8h | 48 |
| 23 | 1.1.3 | **Profitability Assessment** | 36d | 2026-07-10 | 2026-08-31 |  | 2026-05-29 | 2026-07-17 | 36d | 0d |  |  | 288h | 144 |
| 24 | 1.1.3.1 | What is your pricing strategy and revenue goals | 5d | 2026-07-10 | 2026-07-17 | 21 | 2026-05-29 | 2026-06-04 | 5d | 0d |  | SS;Transidic Startup Studio | 40h |  |
| 25 | 1.1.3.2 | How many customers/sales will you need to reach your revenues goals | 5d | 2026-07-17 | 2026-07-24 | 24 | 2026-06-05 | 2026-06-11 | 5d | 0d |  | SS;Transidic Startup Studio | 40h |  |
| 26 | 1.1.3.3 | What are your profit margins | 5d | 2026-07-24 | 2026-07-31 | 25 | 2026-06-12 | 2026-06-18 | 5d | 0d |  | SS;Transidic Startup Studio | 40h |  |
| 27 | 1.1.3.4 | What are your profit projections | 5d | 2026-07-31 | 2026-08-07 | 26 | 2026-06-19 | 2026-06-25 | 5d | 0d |  | SS;Transidic Startup Studio | 40h |  |
| 28 | 1.1.3.5 | Estimate your operating expenses and add 50% for the unforseen | 5d | 2026-08-07 | 2026-08-14 | 27 | 2026-06-26 | 2026-07-02 | 5d | 0d |  | SS;Transidic Startup Studio | 40h |  |
| 29 | 1.1.3.6 | Do a monthly cashflow forecast | 5d | 2026-08-14 | 2026-08-21 | 28 | 2026-07-03 | 2026-07-09 | 5d | 0d |  | SS;Transidic Startup Studio | 40h |  |
| 30 | 1.1.3.7 | Preparation of a profitability Assessment Report | 2d | 2026-08-21 | 2026-08-25 | 29 | 2026-07-10 | 2026-07-13 | 2d | 0d |  | SS;Transidic Startup Studio | 16h |  |
| 31 | 1.1.3.8 | Preparation of Power Point Presentation | 2d | 2026-08-25 | 2026-08-27 | 30 | 2026-07-14 | 2026-07-15 | 2d | 0d |  | Transidic Startup Studio | 16h | 96 |
| 32 | 1.1.3.9 | Meetig No. 3 | 1d | 2026-08-27 | 2026-08-28 | 31 | 2026-07-16 | 2026-07-16 | 1d | 0d |  | SS;Transidic Startup Studio | 8h |  |
| 33 | 1.1.3.10 | Preparation of Meeting No. 3 Meetings | 1d | 2026-08-28 | 2026-08-31 | 32 | 2026-07-17 | 2026-07-17 | 1d | 0d |  | Transidic Startup Studio | 8h | 48 |

| ID | WBS | Task | Duration | Start | Finish | Predecessors | Baseline start | Baseline finish | Baseline duration | Total slack | Resources | Work | Cost |
| --- | --- | --- | --- | --- | --- | --- | --- | --- | --- | --- | --- | --- | --- |
| 34 | 1.1.4 | **1-Page Business Plan** | 24.12d | 2026-08-31 | 2026-10-02 |  | 2026-07-20 | 2026-08-21 | 25d | 0d |  | 153h | 48 |
| 35 | 1.1.4.1 | **Your Business** | 5d | 2026-08-31 | 2026-09-07 |  | 2026-07-20 | 2026-07-24 | 5d | 0d |  | 40h |  |
| 36 | 1.1.4.1.1 | Why | 1d | 2026-08-31 | 2026-09-01 | 33 | 2026-07-20 | 2026-07-20 | 1d | 0d | SS;Transidic Startup Studio | 8h |  |
| 37 | 1.1.4.1.2 | Vision | 1d | 2026-09-01 | 2026-09-02 | 36 | 2026-07-21 | 2026-07-21 | 1d | 0d | SS;Transidic Startup Studio | 8h |  |
| 38 | 1.1.4.1.3 | Mission | 1d | 2026-09-02 | 2026-09-03 | 37 | 2026-07-22 | 2026-07-22 | 1d | 0d | SS;Transidic Startup Studio | 8h |  |
| 39 | 1.1.4.1.4 | Values | 1d | 2026-09-03 | 2026-09-04 | 38 | 2026-07-23 | 2026-07-23 | 1d | 0d | SS;Transidic Startup Studio | 8h |  |
| 40 | 1.1.4.1.5 | Competitors | 1d | 2026-09-04 | 2026-09-07 | 39 | 2026-07-24 | 2026-07-24 | 1d | 0d | SS;Transidic Startup Studio | 8h |  |
| 41 | 1.1.4.2 | **Your Customer** | 5d | 2026-09-07 | 2026-09-14 |  | 2026-07-27 | 2026-07-31 | 5d | 0d |  | 40h |  |
| 42 | 1.1.4.2.1 | Description | 1d | 2026-09-07 | 2026-09-08 | 40 | 2026-07-27 | 2026-07-27 | 1d | 0d | SS;Transidic Startup Studio | 8h |  |
| 43 | 1.1.4.2.2 | Needs | 1d | 2026-09-08 | 2026-09-09 | 42 | 2026-07-28 | 2026-07-28 | 1d | 0d | SS;Transidic Startup Studio | 8h |  |
| 44 | 1.1.4.2.3 | Desires | 1d | 2026-09-09 | 2026-09-10 | 43 | 2026-07-29 | 2026-07-29 | 1d | 0d | SS;Transidic Startup Studio | 8h |  |
| 45 | 1.1.4.2.4 | Value | 1d | 2026-09-10 | 2026-09-11 | 44 | 2026-07-30 | 2026-07-30 | 1d | 0d | SS;Transidic Startup Studio | 8h |  |
| 46 | 1.1.4.2.5 | Social Platforms used etc | 1d | 2026-09-11 | 2026-09-14 | 45 | 2026-07-31 | 2026-07-31 | 1d | 0d | SS;Transidic Startup Studio | 8h |  |
| 47 | 1.1.4.3 | **Timeline** | 5d | 2026-09-14 | 2026-09-21 |  | 2026-08-03 | 2026-08-07 | 5d | 0d |  | 40h |  |
| 48 | 1.1.4.3.1 | 3-year goals | 1d | 2026-09-14 | 2026-09-15 | 46 | 2026-08-03 | 2026-08-03 | 1d | 0d | SS;Transidic Startup Studio | 8h |  |
| 49 | 1.1.4.3.2 | 1-year goals | 1d | 2026-09-15 | 2026-09-16 | 48 | 2026-08-04 | 2026-08-04 | 1d | 0d | SS;Transidic Startup Studio | 8h |  |
| 50 | 1.1.4.3.3 | 3 month goals | 1d | 2026-09-16 | 2026-09-17 | 49 | 2026-08-05 | 2026-08-05 | 1d | 0d | SS;Transidic Startup Studio | 8h |  |
| 51 | 1.1.4.3.4 | Value | 1d | 2026-09-17 | 2026-09-18 | 50 | 2026-08-06 | 2026-08-06 | 1d | 0d | SS;Transidic Startup Studio | 8h |  |
| 52 | 1.1.4.3.5 | Social Platforms used | 1d | 2026-09-18 | 2026-09-21 | 51 | 2026-08-07 | 2026-08-07 | 1d | 0d | SS;Transidic Startup Studio | 8h |  |
| 53 | 1.1.4.4 | **Money** | 5d | 2026-09-21 | 2026-09-28 |  | 2026-08-10 | 2026-08-14 | 5d | 0d |  |  |  |
| 54 | 1.1.4.4.1 | How will you fund your start-up years | 1d | 2026-09-21 | 2026-09-22 | 52 | 2026-08-10 | 2026-08-10 | 1d | 0d |  |  |  |
| 55 | 1.1.4.4.2 | Revenue goals | 1d | 2026-09-22 | 2026-09-23 | 54 | 2026-08-11 | 2026-08-11 | 1d | 0d |  |  |  |
| 56 | 1.1.4.4.3 | Pricing Strategy | 1d | 2026-09-23 | 2026-09-24 | 55 | 2026-08-12 | 2026-08-12 | 1d | 0d |  |  |  |
| 57 | 1.1.4.4.4 | Operating Expenses | 1d | 2026-09-24 | 2026-09-25 | 56 | 2026-08-13 | 2026-08-13 | 1d | 0d |  |  |  |
| 58 | 1.1.4.4.5 | Projected Profits | 1d | 2026-09-25 | 2026-09-28 | 57 | 2026-08-14 | 2026-08-14 | 1d | 0d |  |  |  |
| 59 | 1.1.4.5 | Preparation of 1-Page Business Plan Report | 2d | 2026-09-28 | 2026-09-30 | 58 | 2026-08-17 | 2026-08-18 | 2d | 0d | SS;Transidic Startup Studio | 16h |  |
| 60 | 1.1.4.6 | Preparation of Power Point Presentation | 1d | 2026-09-30 | 2026-10-01 | 59 | 2026-08-19 | 2026-08-19 | 1d | 0d | SS;Transidic Startup Studio | 8h |  |
| 61 | 1.1.4.7 | Meetig No. 4 | 1h | 2026-10-01 | 2026-10-01 | 60 | 2026-08-20 | 2026-08-20 | 1d | 0d | SS;Transidic Startup Studio | 1h |  |
| 62 | 1.1.4.8 | Preparation of Meeting No. 4 Meetings | 1d | 2026-10-01 | 2026-10-02 | 61 | 2026-08-21 | 2026-08-21 | 1d | 0d | Transidic Startup Studio | 8h | 48 |

| ID | WBS | Task | Duration | Start | Finish | Predecessors | Baseline start | Baseline finish | Baseline duration | Total slack | Resources | Work |
| --- | --- | --- | --- | --- | --- | --- | --- | --- | --- | --- | --- | --- |
| 63 | 1.1.5 | **1-Page Marketing Plan** | 30d | 2026-10-02 | 2026-11-13 |  | 2026-08-24 | 2026-10-02 | 30d | 0d |  | 240h |
| 64 | 1.1.5.1 | Your business goals | 5d | 2026-10-02 | 2026-10-09 | 62 | 2026-08-24 | 2026-08-28 | 5d | 0d | SS;Transidic Startup Studio | 40h |
| 65 | 1.1.5.2 | The key marketing activities you need to undertake to achieve your revenue goals | 5d | 2026-10-09 | 2026-10-16 | 64 | 2026-08-31 | 2026-09-04 | 5d | 0d | SS;Transidic Startup Studio | 40h |
| 66 | 1.1.5.3 | Your monthly marketing goals | 5d | 2026-10-16 | 2026-10-23 | 65 | 2026-09-07 | 2026-09-11 | 5d | 0d | SS;Transidic Startup Studio | 40h |
| 67 | 1.1.5.4 | Break each marketing goal down into specific activites and steps | 5d | 2026-10-23 | 2026-10-30 | 66 | 2026-09-14 | 2026-09-18 | 5d | 0d | SS;Transidic Startup Studio | 40h |
| 68 | 1.1.5.5 | Define the marketing budget you will need to achieve your business. If unsure, estimate at least 10% of your revenue goals initially | 5d | 2026-10-30 | 2026-11-06 | 67 | 2026-09-21 | 2026-09-25 | 5d | 0d | SS;Transidic Startup Studio | 40h |
| 69 | 1.1.5.6 | Preparation of 1-Page marketing Plan | 2d | 2026-11-06 | 2026-11-10 | 68 | 2026-09-28 | 2026-09-29 | 2d | 0d | SS;Transidic Startup Studio | 16h |
| 70 | 1.1.5.7 | Preparation of Power Point Presentation | 1d | 2026-11-10 | 2026-11-11 | 69 | 2026-09-30 | 2026-09-30 | 1d | 0d | SS;Transidic Startup Studio | 8h |
| 71 | 1.1.5.8 | Meeting No. 5 | 1d | 2026-11-11 | 2026-11-12 | 70 | 2026-10-01 | 2026-10-01 | 1d | 0d | SS;Transidic Startup Studio | 8h |
| 72 | 1.1.5.9 | Preparation of Meeting No. 5 Minutes | 1d | 2026-11-12 | 2026-11-13 | 71 | 2026-10-02 | 2026-10-02 | 1d | 0d | SS;Transidic Startup Studio | 8h |
| 73 | 1.1.6 | **Validation Stage Checklist** | 12d | 2026-11-13 | 2026-12-01 |  | 2026-10-05 | 2026-10-20 | 12d | 0d |  | 88h |
| 74 | 1.1.6.1 | I have conducted thorough market research ad confirmed there is a market for my product or service and my ideal customers will happily pay good money for it | 1d | 2026-11-13 | 2026-11-16 | 72 | 2026-10-05 | 2026-10-05 | 1d | 0d | SS;Transidic Startup Studio | 8h |
| 75 | 1.1.6.2 | I have developed and tested my prototype product/service on my ideal customers and implemented the feedback l received | 1d | 2026-11-16 | 2026-11-17 | 74 | 2026-10-06 | 2026-10-06 | 1d | 0d | SS;Transidic Startup Studio | 8h |
| 76 | 1.1.6.3 | I have conducted in-depth customer investigation to clearly understand my customers needs and desires and how my product meets them | 1d | 2026-11-17 | 2026-11-18 | 75 | 2026-10-07 | 2026-10-07 | 1d | 0d | SS;Transidic Startup Studio | 8h |
| 77 | 1.1.6.4 | I have clearly identified my target customer, their problem/desire and my solution | 1d | 2026-11-18 | 2026-11-19 | 76 | 2026-10-08 | 2026-10-08 | 1d | 0d | SS;Transidic Startup Studio | 8h |
| 78 | 1.1.6.5 | I have conducted a thorough competitor analysis. I know who my competitors are and how my product/service is different | 1d | 2026-11-19 | 2026-11-20 | 77 | 2026-10-09 | 2026-10-09 | 1d | 0d | SS;Transidic Startup Studio | 8h |
| 79 | 1.1.6.6 | I have conducted a profitability assessment to test my business model | 1d | 2026-11-20 | 2026-11-23 | 78 | 2026-10-12 | 2026-10-12 | 1d | 0d | SS;Transidic Startup Studio | 8h |
| 80 | 1.1.6.7 | I have a funding strategy to get me through the start up phase | 1d | 2026-11-23 | 2026-11-24 | 79 | 2026-10-13 | 2026-10-13 | 1d | 0d | SS;Transidic Startup Studio | 8h |
| 81 | 1.1.6.8 | I have prepared a one page business plan | 1d | 2026-11-24 | 2026-11-25 | 80 | 2026-10-14 | 2026-10-14 | 1d | 0d | SS;Transidic Startup Studio | 8h |
| 82 | 1.1.6.9 | I have prepared a one page strategic marketing plan | 1d | 2026-11-25 | 2026-11-26 | 81 | 2026-10-15 | 2026-10-15 | 1d | 0d | SS;Transidic Startup Studio | 8h |
| 83 | 1.1.6.10 | I have reflected on whether l am cut out to be an entreprenuer | 1d | 2026-11-26 | 2026-11-27 | 82 | 2026-10-16 | 2026-10-16 | 1d | 0d | SS;Transidic Startup Studio | 8h |
| 84 | 1.1.6.11 | I can confirm that my business idea is in my zone of genius | 1d | 2026-11-27 | 2026-11-30 | 83 | 2026-10-19 | 2026-10-19 | 1d | 0d |  |  |
| 85 | 1.1.6.12 | I have looked at my business idea objectively | 1d | 2026-11-30 | 2026-12-01 | 84 | 2026-10-20 | 2026-10-20 | 1d | 0d | SS;Transidic Startup Studio | 8h |
